# HL7_SDK_plan_3_23

Schedule from MS Project, 2007-01-16 to 2008-03-21, A marks actual dates.
NCI

## Calendars

- Standard: Mon-Fri 08:00-12:00, 13:00-17:00; Sat-Sun off.

## Resources

| Resource |
| --- |
| Ye |
| Nick |
| Ki-Sung |
| Harsha |
| Eugene |
| Wendy |
| QA |
| Ki Sung |
| "Harsha |
| Eugene" |
| Charles |
| System |
| CY |
| EW |
| NS |
| EW/NS |
| Team |

## Schedule

| ID | WBS | Task | Type | Duration | Start | Finish | Predecessors | Complete | Remaining | Baseline start | Baseline finish | Baseline duration | Total slack | Free slack | Constraint | Resources | Work | Actual work |
| --- | --- | --- | --- | --- | --- | --- | --- | --- | --- | --- | --- | --- | --- | --- | --- | --- | --- | --- |
| 1 | 1 | **Perform Project Management Activities** |  | 17d | 2007-01-16 A | 2007-02-07 |  | 31% | 11.72d | 2006-06-12 | 2006-06-19 | 6d? | 297d |  |  |  | 914.59h | 240h |
| 2 | 1.1 | Draft Scope Document |  | 5d | 2007-01-16 | 2007-01-22 |  |  |  | 2006-06-12 | 2006-06-13 | 2d | 212d | 0d | start no earlier than 2007-01-16 | Ye; Harsha; Ki-Sung; Wendy; Eugene; Nick | 240h |  |
| 3 | 2.1.3.3 | Deliverable: Scope Document | milestone | 1d | 2007-01-23 | 2007-01-23 | 2 |  |  | 2006-06-14 | 2006-06-14 | 1d | 212d | 0d | start no earlier than 2005-06-14 | Ye; Harsha; Ki-Sung; Wendy; Eugene; Nick | 48h |  |
| 4 | 1.3 | Draft Initial Project Plan |  | 5d | 2007-01-24 | 2007-01-30 | 3 |  |  | 2003-09-08 | 2005-12-13 | 593d? | 214d | 0d |  | Ye | 40h |  |
| 5 | 2.1.3.3 | Deliverable: Project Plan |  | 1d | 2007-01-31 | 2007-01-31 | 4 |  |  | 2006-06-16 | 2006-06-16 | 1d | 214d |  |  | Ye | 8h |  |
| 6 | 1.5 | Review Scope Document |  | 1d | 2007-01-24 | 2007-01-24 | 3 |  |  | 2006-06-15 | 2006-06-15 | 1d | 212d | 0d |  | Ye; Harsha; Ki-Sung; Wendy; Eugene; Nick | 40.88h |  |
| 7 | 1.6 | Draft System Requirment Document |  | 5d | 2007-01-25 | 2007-01-31 | 6 |  |  | 2006-06-19 | 2006-06-19 | 1d? | 212d | 0d |  | Ye; Harsha; Ki-Sung; Wendy; Eugene; Nick | 208.83h |  |
| 8 | 1.7 | Deliverable: System Requirment Document |  | 1d | 2007-02-01 | 2007-02-01 | 7 |  |  | 2006-06-16 | 2006-06-16 | 1d? | 212d | 0d |  | Ye; Harsha; Ki-Sung; Wendy; Eugene; Nick | 48h |  |
| 9 | 1.8 | Revise and submit project plan to Gforge |  | 1d | 2007-02-02 | 2007-02-02 | 8 |  |  | 2006-06-19 | 2006-06-19 | 1d? | 212d |  |  | Ye; Harsha; Ki-Sung; Wendy; Eugene; Nick | 40.88h |  |
| 10 | 1.9 | **caBIG Annual Meeting** |  | 17d | 2007-01-16 A | 2007-02-07 A |  | 100% |  |  |  |  |  |  |  |  | 240h | 240h |
| 11 | 1.9.1 | Poster |  | 2d | 2007-01-16 A | 2007-01-17 A |  | 100% |  |  |  |  |  |  | start no earlier than 2007-01-16 | Ye; Wendy | 32h | 32h |
| 12 | 1.9.2 | Tech Demo |  | 2d | 2007-01-18 A | 2007-01-19 A | 11 | 100% |  |  |  |  |  |  | start no earlier than 2007-01-16 | Ye; Wendy | 32h | 32h |
| 13 | 1.9.3 | Hack-a-Thon |  | 2d | 2007-01-22 A | 2007-01-23 A | 12 | 100% |  |  |  |  |  |  | start no earlier than 2007-01-16 | Ye; Wendy | 32h | 32h |
| 14 | 1.9.4 | caBIG annual meeting |  | 3d | 2007-02-05 A | 2007-02-07 A | 13 | 100% |  |  |  |  |  |  | start no earlier than 2007-01-16 | Ye; Harsha; Ki-Sung; Wendy; Eugene; Nick | 144h | 144h |
| 15 | 2 | **caAdapter V3.2.0.1 tasks** |  | 59d | 2007-02-08 A | 2007-05-01 A |  | 100% |  |  |  |  |  |  |  |  | 656h | 656h |
| 16 | 2.1 | **Inception** |  | 19d | 2007-02-08 A | 2007-03-06 A |  | 100% |  | 2006-06-19 | 2006-07-03 | 11d |  |  |  |  | 152h | 152h |
| 17 | 2.1.1 | Requirement gathering and analysis |  | 10d | 2007-02-08 A | 2007-02-21 A |  | 100% |  | 2006-06-19 | 2006-06-30 | 10d |  |  | start no earlier than 2007-02-08 | Nick | 80h | 80h |
| 18 | 2.1.2 | Draft use cases for model mapping service enhancement (Task 4) |  | 8d | 2007-02-22 A | 2007-03-05 A | 17 | 100% |  | 2006-06-19 | 2006-06-30 | 10d |  |  | start no earlier than 2007-02-22 | Nick | 64h | 64h |
| 19 | 2.1.3.3 | Deliverable: Use Cases | milestone | 1d | 2007-03-06 A | 2007-03-06 A | 18 | 100% |  | 2006-07-03 | 2006-07-03 | 1d |  |  | finish no earlier than 2006-07-04 | Nick | 8h | 8h |
| 20 | 2.2 | **Elaboration** |  | 17d | 2007-03-07 A | 2007-03-29 A |  | 100% |  | 2006-07-04 | 2006-07-19 | 12d |  |  |  |  | 136h | 136h |
| 21 | 2.2.1 | Draft design document for model mapping service enhancement (Task 4) |  | 5d | 2007-03-07 A | 2007-03-13 A | 16 | 100% |  | 2006-06-19 | 2006-06-30 | 10d |  |  | start no earlier than 2007-02-27 | Nick | 40h | 40h |
| 22 | 2.2.2 | Deliverable: Design Doc |  | 1d | 2007-03-14 A | 2007-03-14 A | 21 | 100% |  | 2006-07-19 | 2006-07-19 | 1d |  |  |  | Nick | 8h | 8h |
| 23 | 2.2.3 | Draft Test Plan and Test Cases |  | 10d | 2007-03-15 A | 2007-03-28 A | 22 | 100% |  | 2006-07-04 | 2006-07-17 | 10d |  |  |  | QA | 80h | 80h |
| 24 | 2.2.4 | Deliverable: System Test Plan |  | 1d | 2007-03-29 A | 2007-03-29 A | 23 | 100% |  | 2006-07-18 | 2006-07-18 | 0.3d |  |  |  | QA | 8h | 8h |

| ID | WBS | Task | Type | Duration | Start | Finish | Predecessors | Complete | Baseline start | Baseline finish | Baseline duration | Total slack | Free slack | Constraint | Resources | Work | Actual work |
| --- | --- | --- | --- | --- | --- | --- | --- | --- | --- | --- | --- | --- | --- | --- | --- | --- | --- |
| 25 | 2.3 | **model mapping service enhancement (Task 4) development** |  | 16d | 2007-03-15 A | 2007-04-05 A |  | 100% | 2006-06-19 | 2006-06-30 | 10d |  |  |  |  | 128h | 128h |
| 26 | 2.3.1 | Retrieval of tag values from .xmi files (task 4(d)) |  | 10d | 2007-03-15 A | 2007-03-28 A | 22 | 100% |  |  |  |  |  |  | Nick | 80h | 80h |
| 27 | 2.3.2 | UI enhancement for MMS (task 4(d)) |  | 3d | 2007-03-29 A | 2007-04-02 A | 26 | 100% |  |  |  |  |  |  | Nick | 24h | 24h |
| 28 | 2.3.3 | System integration testing (task 4(d)) |  | 3d | 2007-04-03 A | 2007-04-05 A | 27 | 100% |  |  |  |  |  |  | Nick | 24h | 24h |
| 29 | 2.4 | **Transition** |  | 6d | 2007-04-06 A | 2007-04-13 A |  | 100% |  |  |  |  |  |  |  | 48h | 48h |
| 30 | 2.4.1 | QA System testing - Model Mapping Service |  | 3d | 2007-04-06 A | 2007-04-10 A | 25 | 100% |  |  |  |  |  |  | Nick | 24h | 24h |
| 31 | 2.4.2 | Staging System testing |  | 3d | 2007-04-11 A | 2007-04-13 A | 30 | 100% |  |  |  |  |  |  | Nick | 24h | 24h |
| 32 | 2.5 | **Documentation** |  | 12d | 2007-04-16 A | 2007-05-01 A |  | 100% |  |  |  |  |  |  |  | 192h | 192h |
| 33 | 2.1.5.4.1 | Update Requirements |  | 1d | 2007-04-16 A | 2007-04-16 A | 31 | 100% | 2006-12-06 | 2006-12-12 | 5d |  |  |  | Nick; Wendy | 16h | 16h |
| 34 | 2.1.3.3 | Deliverable: Requirements | milestone | 1d | 2007-04-17 A | 2007-04-17 A | 33 | 100% | 2006-12-13 | 2006-12-13 | 1d |  |  | start no earlier than 2005-04-08 | Nick; Wendy | 16h | 16h |
| 35 | 2.1.5.4.3 | Update Users Guide |  | 2d | 2007-04-18 A | 2007-04-19 A | 34 | 100% | 2005-07-25 | 2005-08-05 | 10d? |  |  |  | Nick; Wendy | 32h | 32h |
| 36 | 2.1.3.3 | Deliverable: Users Guide | milestone | 1d | 2007-04-20 A | 2007-04-20 A | 35 | 100% | 2006-12-15 | 2006-12-15 | 1d |  |  | start no earlier than 2005-04-08 | Nick; Wendy | 16h | 16h |
| 37 | 2.1.5.4.2 | Update Design Document |  | 1d | 2007-04-23 A | 2007-04-23 A | 36 | 100% | 2006-12-06 | 2006-12-12 | 5d |  |  |  | Nick; Wendy | 16h | 16h |
| 38 | 2.1.3.3 | Deliverable: Design Document | milestone | 1d | 2007-04-24 A | 2007-04-24 A | 37 | 100% | 2006-12-13 | 2006-12-13 | 1d |  |  | start no earlier than 2005-04-08 | Nick; Wendy | 16h | 16h |
| 39 | 2.1.5.4.4 | Update Installation Guide |  | 1d | 2007-04-25 A | 2007-04-25 A | 38 | 100% | 2006-12-06 | 2006-12-14 | 7d |  |  |  | Nick; Wendy | 16h | 16h |
| 40 | 2.1.3.3 | Deliverable: Installation Guide | milestone | 1d | 2007-04-26 A | 2007-04-26 A | 39 | 100% | 2006-12-15 | 2006-12-15 | 1d |  |  | start no earlier than 2005-04-08 | Nick; Wendy | 16h | 16h |
| 41 | 2.1.5.4.5 | Update Readme, Release Note, Website, Help |  | 1d | 2007-04-27 A | 2007-04-27 A | 40 | 100% | 2006-12-06 | 2006-12-06 | 1d |  |  | start no earlier than 2005-12-19 | Nick; Wendy | 16h | 16h |
| 42 | 2.5.10 | Prepare final download package |  | 1d | 2007-04-30 A | 2007-04-30 A |  | 100% | 2006-12-19 | 2006-12-20 | 2d |  |  |  | Nick; Wendy | 16h | 16h |
| 43 | 2.1.6 | Deliverable: Packaged Iteration | milestone | 1d | 2007-05-01 A | 2007-05-01 A | 42 | 100% | 2006-12-18 | 2006-12-18 | 1d |  |  |  | Nick; Wendy | 16h | 16h |
| 44 | 3 | **caAdapter V3.2.0.2 tasks** |  | 48d | 2007-05-02 | 2007-07-06 |  |  |  |  |  | 190d |  |  |  | 584h |  |
| 45 | 3.1 | **Inception** |  | 11d | 2007-05-02 | 2007-05-16 |  |  | 2006-06-19 | 2006-07-03 | 11d | 190d | 0d |  |  | 88h |  |
| 46 | 3.1.1 | Requirement gathering and analysis |  | 5d | 2007-05-02 | 2007-05-08 | 15 |  | 2006-06-19 | 2006-06-30 | 10d | 138d | 0d | start no earlier than 2007-02-08 | Nick | 40h |  |
| 47 | 3.1.2 | Draft use cases for model mapping service enhancement (Task 4) |  | 5d | 2007-05-09 | 2007-05-15 | 46 |  | 2006-06-19 | 2006-06-30 | 10d | 138d | 0d | start no earlier than 2007-02-22 | Nick | 40h |  |
| 48 | 2.1.3.3 | Deliverable: Use Cases | milestone | 1d | 2007-05-16 | 2007-05-16 | 47 |  | 2006-07-03 | 2006-07-03 | 1d | 138d |  | finish no earlier than 2006-07-04 | Nick | 8h |  |

| ID | WBS | Task | Type | Duration | Start | Finish | Predecessors | Baseline start | Baseline finish | Baseline duration | Total slack | Free slack | Constraint | Resources | Work |
| --- | --- | --- | --- | --- | --- | --- | --- | --- | --- | --- | --- | --- | --- | --- | --- |
| 49 | 3.2 | **Elaboration** |  | 23d | 2007-05-17 | 2007-06-18 |  | 2006-07-04 | 2006-07-19 | 12d | 190d |  |  |  | 272h |
| 50 | 3.2.1 | Draft design document for model mapping service enhancement (Task 4) |  | 10d | 2007-05-17 | 2007-05-30 | 45 | 2006-06-19 | 2006-06-30 | 10d | 138d | 0d | start no earlier than 2007-02-27 | Nick | 80h |
| 51 | 3.2.2 | Deliverable: Design Doc |  | 1d | 2007-05-31 | 2007-05-31 | 50 | 2006-07-19 | 2006-07-19 | 1d | 138d | 0d |  | Nick | 8h |
| 52 | 3.2.3 | Draft Test Plan and Test Cases |  | 10d | 2007-06-01 | 2007-06-14 | 51 | 2006-07-04 | 2006-07-17 | 10d | 153d | 0d |  | QA | 80h |
| 53 | 3.2.4 | Deliverable: System Test Plan |  | 1d | 2007-06-15 | 2007-06-15 | 52 | 2006-07-18 | 2006-07-18 | 0.3d | 153d |  |  | QA | 8h |
| 54 | 3.2.5 | **model mapping service enhancement (Task 4) development** |  | 12d | 2007-06-01 | 2007-06-18 |  |  |  |  | 190d | 0d |  |  | 96h |
| 55 | 3.2.5.1 | XML meta loader (task 4(f)) |  | 3d | 2007-06-01 | 2007-06-05 | 51 |  |  |  | 138d | 0d |  | Nick | 24h |
| 56 | 3.2.5.2 | Object to Object mapping (task 4(f)) |  | 7d | 2007-06-06 | 2007-06-14 | 55 |  |  |  | 138d | 0d |  | Nick | 56h |
| 57 | 3.2.5.3 | System integration testing (task 4(d)) |  | 2d | 2007-06-15 | 2007-06-18 | 56 |  |  |  | 138d |  |  | Nick | 16h |
| 58 | 3.3 | **Transition** |  | 5d | 2007-06-19 | 2007-06-25 |  |  |  |  | 190d |  |  |  | 80h |
| 59 | 3.3.1 | QA System testing - Model Mapping Service |  | 3d | 2007-06-19 | 2007-06-21 | 54 |  |  |  | 138d | 0d |  | Nick; QA | 48h |
| 60 | 3.3.2 | Staging System testing |  | 2d | 2007-06-22 | 2007-06-25 | 59 |  |  |  | 138d | 0d |  | Nick; QA | 32h |
| 61 | 3.4 | **Documentation** |  | 9d | 2007-06-26 | 2007-07-06 |  |  |  |  | 190d |  |  |  | 144h |
| 62 | 2.1.5.4.1 | Update Requirements |  | 0.5d | 2007-06-26 | 2007-06-26 | 60 | 2006-12-06 | 2006-12-12 | 5d | 138d | 0d |  | Nick; Wendy | 8h |
| 63 | 2.1.3.3 | Deliverable: Requirements | milestone | 0.5d | 2007-06-26 | 2007-06-26 | 62 | 2006-12-13 | 2006-12-13 | 1d | 138d | 0d | start no earlier than 2005-04-08 | Nick; Wendy | 8h |
| 64 | 2.1.5.4.3 | Update Users Guide |  | 2d | 2007-06-27 | 2007-06-28 | 63 | 2005-07-25 | 2005-08-05 | 10d? | 138d | 0d |  | Nick; Wendy | 32h |
| 65 | 2.1.3.3 | Deliverable: Users Guide | milestone | 0.5d | 2007-06-29 | 2007-06-29 | 64 | 2006-12-15 | 2006-12-15 | 1d | 138d | 0d | start no earlier than 2005-04-08 | Nick; Wendy | 8h |
| 66 | 2.1.5.4.2 | Update Design Document |  | 0.5d | 2007-06-29 | 2007-06-29 | 65 | 2006-12-06 | 2006-12-12 | 5d | 138d | 0d |  | Nick; Wendy | 8h |
| 67 | 2.1.3.3 | Deliverable: Design Document | milestone | 0.5d | 2007-07-02 | 2007-07-02 | 66 | 2006-12-13 | 2006-12-13 | 1d | 138d | 0d | start no earlier than 2005-04-08 | Nick; Wendy | 8h |
| 68 | 2.1.5.4.4 | Update Installation Guide |  | 0.5d | 2007-07-02 | 2007-07-02 | 67 | 2006-12-06 | 2006-12-14 | 7d | 138d | 0d |  | Nick; Wendy | 8h |
| 69 | 2.1.3.3 | Deliverable: Installation Guide | milestone | 0.5d | 2007-07-03 | 2007-07-03 | 68 | 2006-12-15 | 2006-12-15 | 1d | 138d | 0d | start no earlier than 2005-04-08 | Nick; Wendy | 8h |
| 70 | 2.1.5.4.5 | Update Readme |  | 0.5d | 2007-07-03 | 2007-07-03 | 69 | 2006-12-06 | 2006-12-06 | 1d | 138d | 0d | start no earlier than 2005-12-19 | Nick; Wendy | 8h |
| 71 | 2.1.5.4.6 | Update Release Note |  | 0.5d | 2007-07-04 | 2007-07-04 | 70 | 2006-12-06 | 2006-12-07 | 2d | 138d | 0d | start no earlier than 2005-12-19 | Nick; Wendy | 8h |
| 72 | 2.1.5.4.6 | Update Press Release |  | 0.5d | 2007-07-04 | 2007-07-04 | 71 | 2006-12-06 | 2006-12-07 | 2d | 138d | 0d | start no earlier than 2005-12-19 | Nick; Wendy | 8h |
| 73 | 2.1.5.4.8 | Update the Website content |  | 0.5d | 2007-07-05 | 2007-07-05 | 72 | 2006-12-06 | 2006-12-12 | 5d | 138d | 0d |  | Nick; Wendy | 8h |
| 74 | 3.4.13 | Update Mapping Tool Help System Text |  | 0.5d | 2007-07-05 | 2007-07-05 | 73 | 2006-12-06 | 2006-12-08 | 3d | 138d | 0d |  | Nick; Wendy | 8h |
| 75 | 3.4.14 | Prepare final download package |  | 0.5d | 2007-07-06 | 2007-07-06 | 74 | 2006-12-19 | 2006-12-20 | 2d | 138d | 0d |  | Nick; Wendy | 8h |
| 76 | 2.1.6 | Deliverable: Packaged Iteration | milestone | 0.5d | 2007-07-06 | 2007-07-06 | 75 | 2006-12-18 | 2006-12-18 | 1d | 138d |  |  | Nick; Wendy | 8h |

| ID | WBS | Task | Type | Duration | Start | Finish | Predecessors | Complete | Remaining | Baseline start | Baseline finish | Baseline duration | Total slack | Constraint | Resources | Work | Actual work |
| --- | --- | --- | --- | --- | --- | --- | --- | --- | --- | --- | --- | --- | --- | --- | --- | --- | --- |
| 77 | 4 | **caAdapter V4.0 tasks** |  | 209d? | 2007-02-08 A | 2007-11-27 |  | 98% | 3.68d? | 2005-02-02 | 2005-08-09 | 136d? | 88d |  |  | 8678.4h | 8412h |
| 78 | 4.1 | **Iteration 1 - caAdapter mapping tool set (w/o MMS)** |  | 209d? | 2007-02-08 A | 2007-11-27 |  | 98% | 3.68d? | 2006-06-19 | 2006-12-22 | 135d | 88d |  |  | 8678.4h | 8412h |
| 79 | 4.1.1 | **caAdapter code base enhancement (Task 8)** |  | 8d | 2007-02-08 A | 2007-02-19 A |  | 100% |  |  |  |  |  |  |  | 64h | 64h |
| 80 | 4.1.1.1 | caAdapter code base enhancement analysis |  | 1d | 2007-02-08 A | 2007-02-08 A |  | 100% |  |  |  |  |  | start no earlier than 2007-02-08 | Eugene | 8h | 8h |
| 81 | 4.1.1.2 | caAdapter code base enhancement design |  | 1d | 2007-02-09 A | 2007-02-09 A | 80 | 100% |  |  |  |  |  | start no earlier than 2007-01-16 | Eugene | 8h | 8h |
| 82 | 4.1.1.3 | caAdapter code base enhancement review |  | 1d | 2007-02-12 A | 2007-02-12 A | 81 | 100% |  |  |  |  |  | start no earlier than 2007-01-16 | Eugene | 8h | 8h |
| 83 | 4.1.1.4 | **caAdapter code base enhancement implementation** |  | 5d | 2007-02-13 A | 2007-02-19 A |  | 100% |  |  |  |  |  |  |  | 40h | 40h |
| 84 | 4.1.1.4.1 | caAdapter code base enhancement UI implementation |  | 2d | 2007-02-13 A | 2007-02-14 A | 82 | 100% |  |  |  |  |  | start no earlier than 2007-01-16 | Eugene | 16h | 16h |
| 85 | 4.1.1.4.2 | caAdapter code base enhancement - service layer implementation |  | 3d | 2007-02-15 A | 2007-02-19 A | 84 | 100% |  |  |  |  |  | start no earlier than 2007-01-16 | Eugene | 24h | 24h |
| 86 | 4.1.2 | **Inception** |  | 31d | 2007-02-20 A | 2007-04-03 A |  | 100% |  | 2006-06-19 | 2006-07-03 | 11d |  |  |  | 1140h | 1140h |
| 87 | 4.1.2.1 | Requirement gathering and analysis |  | 15d | 2007-02-20 A | 2007-03-12 A | 85 | 100% |  | 2006-06-19 | 2006-06-30 | 10d |  | start no earlier than 2007-02-08 | Harsha; Ki Sung; Wendy; Ye; Eugene | 600h | 600h |
| 88 | 4.1.2.2 | Draft use cases for csv/database to SDTM transformation service enhancement (Task 1) |  | 15d | 2007-03-13 A | 2007-04-02 A | 87 | 100% |  | 2006-06-19 | 2006-06-30 | 10d |  | start no earlier than 2007-02-22 | Harsha [50%] | 60h | 60h |
| 89 | 4.1.2.3 | Draft use cases for csv to HL7 v3 transformation service enhancement (Task 2) |  | 15d | 2007-03-13 A | 2007-04-02 A | 87 | 100% |  | 2006-06-19 | 2006-06-30 | 10d |  | start no earlier than 2007-02-22 | Ye [50%]; Wendy [50%] | 80h | 80h |
| 90 | 4.1.2.4 | Draft use cases for HL7 v2 to HL7 v3 transformation service enhancement (Task 3) |  | 15d | 2007-03-13 A | 2007-04-02 A | 87 | 100% |  | 2006-06-19 | 2006-06-30 | 10d |  | start no earlier than 2007-02-22 | Ki-Sung [50%] | 60h | 60h |
| 91 | 4.1.2.5 | Draft use cases for vocabulary mapping service (Task 6) |  | 15d | 2007-03-13 A | 2007-04-02 A | 87 | 100% |  | 2006-06-19 | 2006-06-30 | 10d |  | start no earlier than 2007-02-22 | Ki-Sung [50%] | 60h | 60h |
| 92 | 4.1.2.6 | Draft use cases caAdapter Web Services (Task 7) |  | 15d | 2007-03-13 A | 2007-04-02 A | 87 | 100% |  | 2006-06-19 | 2006-06-30 | 10d |  | start no earlier than 2007-02-22 | Ye [50%]; Harsha [50%] | 120h | 120h |
| 93 | 4.1.2.7 | Draft use cases forHL7 v3 to csv transformation service enhancement (Task 9) |  | 15d | 2007-03-13 A | 2007-04-02 A | 87 | 100% |  | 2006-06-19 | 2006-06-30 | 10d |  | start no earlier than 2007-02-22 | Eugene | 120h | 120h |
| 94 | 2.1.3.3 | Deliverable: Use Cases | milestone | 1d | 2007-04-03 A | 2007-04-03 A | 93 | 100% |  | 2006-07-03 | 2006-07-03 | 1d |  | finish no earlier than 2006-07-04 | Harsha; Ki-Sung; Wendy; Ye; Eugene | 40h | 40h |
| 95 | 4.1.3 | **Elaboration** |  | 27d | 2007-04-04 A | 2007-05-10 A |  | 100% |  | 2006-07-04 | 2006-07-19 | 12d |  |  |  | 952h | 952h |
| 96 | 4.1.3.1 | Initial design document for csv/database to SDTM transformation service enhancement (Task 1) |  | 15d | 2007-04-04 A | 2007-04-24 A | 94 | 100% |  | 2006-06-19 | 2006-06-30 | 10d |  | start no earlier than 2007-02-27 | Harsha [50%] | 60h | 60h |
| 97 | 4.1.3.2 | Initial design document for csv to HL7 v3 transformation service enhancement (Task 2) |  | 15d | 2007-04-04 A | 2007-04-24 A | 94 | 100% |  | 2006-06-19 | 2006-06-30 | 10d |  | start no earlier than 2007-02-27 | Ye [50%] | 60h | 60h |
| 98 | 4.1.3.3 | Initial design document for HL7 v2 to HL7 v3 transformation service enhancement (Task 3) |  | 15d | 2007-04-04 A | 2007-04-24 A | 94 | 100% |  | 2006-06-19 | 2006-06-30 | 10d |  | start no earlier than 2007-02-27 | Ki-Sung [50%]; Ye [10%] | 72h | 72h |
| 99 | 4.1.3.4 | Initial design document for vocabulary mapping service (Task 6) |  | 15d | 2007-04-04 A | 2007-04-24 A | 94 | 100% |  | 2006-06-19 | 2006-06-30 | 10d |  | start no earlier than 2007-02-27 | Ki-Sung [50%] | 60h | 60h |
| 100 | 4.1.3.5 | Initial design document caAdapter Web Services (Task 7) |  | 15d | 2007-04-04 A | 2007-04-24 A | 94 | 100% |  | 2006-06-19 | 2006-06-30 | 10d |  | start no earlier than 2007-03-19 | Ye [40%]; Harsha [50%] | 108h | 108h |
| 101 | 4.1.3.6 | Initial design document forHL7 v3 to csv transformation service enhancement (Task 9) |  | 15d | 2007-04-04 A | 2007-04-24 A | 94 | 100% |  | 2006-06-19 | 2006-06-30 | 10d |  | start no earlier than 2007-03-19 | Eugene | 120h | 120h |
| 102 | 4.1.3.7 | Deliverable: Initial Design Doc |  | 1d | 2007-04-25 A | 2007-04-25 A | 101 | 100% |  | 2006-07-19 | 2006-07-19 | 1d |  |  | Harsha; Ki-Sung; Ye; Eugene | 32h | 32h |
| 103 | 4.1.3.8 | Design Review |  | 5d | 2007-04-26 A | 2007-05-02 A | 102 | 100% |  | 2006-07-04 | 2006-07-17 | 10d |  |  | Harsha; Ki-Sung; Ye; Eugene; QA | 200h | 200h |
| 104 | 4.1.3.9 | Design enhancement |  | 5d | 2007-05-03 A | 2007-05-09 A | 103 | 100% |  | 2006-07-04 | 2006-07-17 | 10d |  |  | Harsha; Ki-Sung; Wendy; Ye; Eugene | 200h | 200h |
| 105 | 4.1.3.10 | Deliverable: Design Doc |  | 1d | 2007-05-10 A | 2007-05-10 A | 104 | 100% |  | 2006-07-19 | 2006-07-19 | 1d |  |  | Harsha; Ki-Sung; Wendy; Ye; Eugene | 40h | 40h |

| ID | WBS | Task | Type | Duration | Start | Finish | Predecessors | Complete | Remaining | Baseline start | Baseline finish | Baseline duration | Total slack | Free slack | Constraint | Resources | Work | Actual work |
| --- | --- | --- | --- | --- | --- | --- | --- | --- | --- | --- | --- | --- | --- | --- | --- | --- | --- | --- |
| 106 | 4.1.4 | **QA Draft Test Plan and Test Cases** |  | 32d | 2007-05-11 A | 2007-06-25 |  | 90% | 3.2d | 2006-07-04 | 2006-07-17 | 10d | 199d |  |  | QA | 512h | 460.8h |
| 107 | 4.1.4.1 | Draft Test Plan and Test Cases |  | 15d | 2007-05-11 A | 2007-05-31 | 105 | 90% | 1.5d | 2006-07-04 | 2006-07-17 | 10d | 113.3d | 0d |  | QA | 120h | 108h |
| 108 | 4.1.4.2 | Deliverable: Initial System Test Plan |  | 1d | 2007-06-01 A | 2007-06-01 | 107 | 90% | 0.1d | 2006-07-18 | 2006-07-18 | 0.3d | 112.4d | 0d |  | QA | 8h | 7.2h |
| 109 | 4.1.4.3 | Test Plan and Test Cases Enhancement |  | 15d | 2007-06-04 A | 2007-06-22 | 108 | 90% | 1.5d | 2006-07-04 | 2006-07-17 | 10d | 98.9d | 0d |  | QA | 120h | 108h |
| 110 | 4.1.4.4 | Deliverable: System Test Plan | milestone | 1d | 2007-06-25 A | 2007-06-25 | 109 | 90% | 0.1d | 2006-07-18 | 2006-07-18 | 0.3d | 98d |  |  | QA | 8h | 7.2h |
| 111 | 4.1.5 | **Construction** |  | 47.4d? | 2007-05-11 A | 2007-07-17 A |  | 100% |  | 2006-07-20 | 2006-09-20 | 45d |  |  |  |  | 1576h | 1576h |
| 112 | 4.1.5.1 | **csv/database to SDTM transformation service enhancement (Task 1) development** |  | 40d | 2007-05-11 A | 2007-07-05 A |  | 100% |  | 2006-06-19 | 2006-06-30 | 10d |  |  |  |  | 320h | 320h |
| 113 | 4.1.5.1.1 | Database/CTOM object model to SDTM mapping (task 1(a)) |  | 10d | 2007-05-11 A | 2007-05-24 A | 105 | 100% |  |  |  |  |  |  |  | Harsha | 80h | 80h |
| 114 | 4.1.5.1.2 | Query Builder (task 1(a)) |  | 10d | 2007-05-25 A | 2007-06-07 A | 113 | 100% |  |  |  |  |  |  |  | Harsha | 80h | 80h |
| 115 | 4.1.5.1.3 | SDTM API (task 1( c )) |  | 10d | 2007-06-08 A | 2007-06-21 A | 114 | 100% |  |  |  |  |  |  |  | Harsha | 80h | 80h |
| 116 | 4.1.5.1.4 | SDTM web services (task 1(d)) |  | 10d | 2007-06-22 A | 2007-07-05 A | 115 | 100% |  |  |  |  |  |  |  | Harsha | 80h | 80h |
| 117 | 4.1.5.2 | **csv to HL7 v3 transformation service enhancement (Task 2) development** |  | 40d | 2007-05-11 A | 2007-07-05 A |  | 100% |  |  |  |  |  |  |  |  | 320h | 320h |
| 118 | 4.1.5.2.1 | HL7 v3 Datatype parser (task 2(a)) |  | 10d | 2007-05-11 A | 2007-05-24 A | 105 | 100% |  |  |  |  |  |  |  | Ye | 80h | 80h |
| 119 | 4.1.5.2.2 | HL7 v3 Mif parser (task 2(a)) |  | 10d | 2007-05-25 A | 2007-06-07 A | 118 | 100% |  |  |  |  |  |  |  | Ye | 80h | 80h |
| 120 | 4.1.5.2.3 | csv to HL7 v3 transformation service enhancement (task 2(a)) |  | 10d | 2007-06-08 A | 2007-06-21 A | 119 | 100% |  |  |  |  |  |  |  | Ye | 80h | 80h |
| 121 | 4.1.5.2.4 | csv to HL7 v3 UI enhancement |  | 10d | 2007-06-22 A | 2007-07-05 A | 120 | 100% |  |  |  |  |  |  |  | Ye | 80h | 80h |
| 122 | 4.1.5.3 | **HL7 v2 to HL7 v3 transformation service enhancement (Task 3) development** |  | 30d | 2007-05-11 A | 2007-06-21 A |  | 100% |  | 2006-06-19 | 2006-06-30 | 10d |  |  |  |  | 240h | 240h |
| 123 | 4.1.5.3.1 | HL7 v2 H2S Meta data parser |  | 10d | 2007-05-11 A | 2007-05-24 A | 105 | 100% |  | 2006-06-19 | 2006-06-30 | 10d |  |  | start no earlier than 2007-02-27 | Ki-Sung | 80h | 80h |
| 124 | 4.1.5.3.2 | HL7 v2 H2S to HL7 v3 transformer |  | 10d | 2007-05-25 A | 2007-06-07 A | 123 | 100% |  | 2006-06-19 | 2006-06-30 | 10d |  |  | start no earlier than 2007-02-27 | Ki-Sung | 80h | 80h |
| 125 | 4.1.5.3.3 | HL7 v2 H2S Mapping Interface |  | 10d | 2007-06-08 A | 2007-06-21 A | 124 | 100% |  | 2006-06-19 | 2006-06-30 | 10d |  |  | start no earlier than 2007-02-27 | Ki-Sung | 80h | 80h |
| 126 | 4.1.5.4 | vocabulary mapping service (Task 6) development |  | 10d | 2007-06-22 A | 2007-07-05 A | 125 | 100% |  | 2006-06-19 | 2006-06-30 | 10d |  |  | start no earlier than 2007-02-27 | Ki-Sung | 80h | 80h |
| 127 | 4.1.5.5 | **HL7 v3 to csv transformation service enhancement (Task 9) development** |  | 40d | 2007-05-11 A | 2007-07-05 A |  | 100% |  | 2006-06-19 | 2006-06-30 | 10d |  |  |  |  | 320h | 320h |
| 128 | 4.1.5.5.1 | HL7 v3 message parser |  | 13d | 2007-05-11 A | 2007-05-29 A | 105 | 100% |  |  |  |  |  |  |  | Eugene | 104h | 104h |
| 129 | 4.1.5.5.2 | HL7 v3 message to csv transformer |  | 13d | 2007-05-30 A | 2007-06-15 A | 128 | 100% |  |  |  |  |  |  |  | Eugene | 104h | 104h |
| 130 | 4.1.5.5.3 | HL7 v3 to csv tranformation report |  | 14d | 2007-06-18 A | 2007-07-05 A | 129 | 100% |  |  |  |  |  |  |  | Eugene | 112h | 112h |
| 131 | 4.1.5.6 | caAdapter product packaging and intial installation testing |  | 2.4d | 2007-07-06 A | 2007-07-10 A | 112 | 100% |  |  |  |  |  |  |  | Eugene; Ki-Sung; Wendy; Ye; Harsha | 96h | 96h |
| 132 | 4.1.5.7 | caAdapter Internal integration Testing |  | 5d | 2007-07-10 A | 2007-07-17 A | 131 | 100% |  |  |  |  |  |  |  | Eugene; Ki-Sung; Wendy; Ye; Harsha | 200h | 200h |
| 133 | 4.1.5.8 | Cross-Product Scope Complete |  | 1d? | 2007-06-01 A | 2007-06-01 A |  | 100% |  |  |  |  |  |  | start no earlier than 2007-06-01 |  |  |  |
| 134 | 4.1.5.9 | Cross-Product Scope Design Reviews Complete/Approved |  | 1d? | 2007-06-25 A | 2007-06-25 A |  | 100% |  |  |  |  |  |  | start no earlier than 2007-06-25 |  |  |  |
| 135 | 4.1.5.10 | Cross-Product Scope Freeze |  | 1d? | 2007-07-16 A | 2007-07-16 A |  | 100% |  |  |  |  |  |  | start no earlier than 2007-07-16 |  |  |  |

| ID | WBS | Task | Type | Duration | Start | Finish | Predecessors | Complete | Remaining | Baseline start | Baseline finish | Baseline duration | Total slack | Free slack | Constraint | Resources | Work | Actual work |
| --- | --- | --- | --- | --- | --- | --- | --- | --- | --- | --- | --- | --- | --- | --- | --- | --- | --- | --- |
| 136 | 2.1.5 | **Transition** |  | 89d? | 2007-07-09 A | 2007-11-08 |  | 99% | 0.78d? | 2005-07-11 | 2005-08-09 | 22d? | 101d |  |  |  | 3944h | 3856h |
| 137 | 2.1.5.1 | **Deploy To QA Server - Integration Testing, Test, and Resolve Defects** |  | 21d | 2007-07-09 A | 2007-08-06 A |  | 100% |  | 2005-07-11 | 2005-07-22 | 10d |  |  |  |  | 728h | 728h |
| 138 | 4.1.6.1.1 | Deploy to QA server for integration testing |  | 1d | 2007-07-17 A | 2007-07-18 A | 111 | 100% |  | 2006-09-21 | 2006-09-22 | 2d |  |  |  | Harsha; Ki-Sung; Wendy; Ye; Eugene | 40h | 40h |
| 139 | 4.1.6.1.2 | Execute csv/database to SDTM transformation service enhancement (Task 1) test cases |  | 7d | 2007-07-18 A | 2007-07-27 A | 138 | 100% |  | 2006-06-19 | 2006-06-30 | 10d |  |  | start no earlier than 2007-02-27 | Harsha | 56h | 56h |
| 140 | 4.1.6.1.3 | Execute csv to HL7 v3 transformation service enhancement (Task 2) test cases |  | 7d | 2007-07-18 A | 2007-07-27 A | 138 | 100% |  | 2006-06-19 | 2006-06-30 | 10d |  |  | start no earlier than 2007-02-27 | Wendy | 56h | 56h |
| 141 | 4.1.6.1.4 | Execute HL7 v2 to HL7 v3 transformation service enhancement (Task 3) test cases |  | 7d | 2007-07-18 A | 2007-07-27 A | 138 | 100% |  | 2006-06-19 | 2006-06-30 | 10d |  |  | start no earlier than 2007-02-27 | Ki-Sung [50%] | 28h | 28h |
| 142 | 4.1.6.1.5 | Execute vocabulary mapping service (Task 6) test cases |  | 7d | 2007-07-18 A | 2007-07-27 A | 138 | 100% |  |  |  |  |  |  |  | Ki-Sung [50%] | 28h | 28h |
| 143 | 4.1.6.1.6 | Execute caAdapter Web Services (Task 7) test cases |  | 7d | 2007-07-18 A | 2007-07-27 A | 138 | 100% |  | 2006-06-19 | 2006-06-30 | 10d |  |  | start no earlier than 2007-02-27 | Ye | 56h | 56h |
| 144 | 4.1.6.1.7 | Execute HL7 v3 to csv transformation service enhancement (Task 9) test cases |  | 7d | 2007-07-18 A | 2007-07-27 A | 138 | 100% |  | 2006-06-19 | 2006-06-30 | 10d |  |  | start no earlier than 2007-02-27 | Eugene | 56h | 56h |
| 145 | 4.1.6.1.8 | **model mapping service enhancement (Task 4) development** |  | 15d | 2007-07-09 A | 2007-07-27 A |  | 100% |  | 2006-06-19 | 2006-06-30 | 10d |  |  |  |  | 120h | 120h |
| 146 | 4.1.6.1.8.1 | Intellegent mapping (task 4 -c) |  | 5d | 2007-07-09 A | 2007-07-13 A | 44 | 100% |  |  |  |  |  |  |  | Nick | 40h | 40h |
| 147 | 4.1.6.1.8.2 | Java Web Start |  | 6d | 2007-07-16 A | 2007-07-23 A | 146 | 100% |  |  |  |  |  |  |  | Nick | 48h | 48h |
| 148 | 4.1.6.1.8.3 | Execute model mapping service enhancement (Task 4) test cases |  | 4d | 2007-07-24 A | 2007-07-27 A | 147 | 100% |  | 2006-06-19 | 2006-06-30 | 10d |  |  | start no earlier than 2007-02-27 | Nick | 32h | 32h |
| 149 | 4.1.6.1.9 | Execute all test cases |  | 6d | 2007-07-30 A | 2007-08-06 A | 145 | 100% |  | 2006-10-23 | 2006-10-31 | 7d |  |  |  | Harsha; Ki-Sung; Wendy; Ye; Eugene; QA | 288h | 288h |
| 150 | 2.1.5.1 | **QA Testing- System testing, Test, and Resolve Defects** |  | 68d? | 2007-08-07 A | 2007-11-08 |  | 99% | 0.83d? | 2005-07-11 | 2005-07-22 | 10d | 101d |  |  |  | 3216h | 3128h |
| 151 | 4.1.6.2.1 | Deploy to QA server for System testing |  | 1d | 2007-08-07 A | 2007-08-07 A | 137 | 100% |  | 2006-09-21 | 2006-09-22 | 2d |  |  |  |  |  |  |
| 152 | 4.1.6.2.2 | Execute csv/database to SDTM transformation service enhancement (Task 1) test cases |  | 15d | 2007-08-08 A | 2007-08-28 A | 151 | 100% |  | 2006-06-19 | 2006-06-30 | 10d |  |  | start no earlier than 2007-02-27 | Harsha | 120h | 120h |
| 153 | 4.1.6.2.3 | Execute csv to HL7 v3 transformation service enhancement (Task 2) test cases |  | 15d | 2007-08-08 A | 2007-08-28 A | 151 | 100% |  | 2006-06-19 | 2006-06-30 | 10d |  |  | start no earlier than 2007-02-27 | Wendy | 120h | 120h |
| 154 | 4.1.6.2.4 | Execute model mapping service enhancement (Task 4) test cases |  | 15d | 2007-08-08 A | 2007-08-28 A | 151 | 100% |  |  |  |  |  |  |  | Nick | 120h | 120h |
| 155 | 4.1.6.2.5 | Execute HL7 v2 to HL7 v3 transformation service enhancement (Task 3) test cases |  | 15d | 2007-08-08 A | 2007-08-28 A | 151 | 100% |  | 2006-06-19 | 2006-06-30 | 10d |  |  | start no earlier than 2007-02-27 | Ki-Sung [50%] | 60h | 60h |
| 156 | 4.1.6.2.6 | Execute vocabulary mapping service (Task 6) test cases |  | 15d | 2007-08-08 A | 2007-08-28 A | 151 | 100% |  | 2006-06-19 | 2006-06-30 | 10d |  |  | start no earlier than 2007-02-27 | Ki-Sung [50%] | 60h | 60h |
| 157 | 4.1.6.2.7 | Execute caAdapter Web Services (Task 7) test cases |  | 15d | 2007-08-08 A | 2007-08-28 A | 151 | 100% |  | 2006-06-19 | 2006-06-30 | 10d |  |  | start no earlier than 2007-02-27 | Ye | 120h | 120h |
| 158 | 4.1.6.2.8 | Execute HL7 v3 to csv transformation service enhancement (Task 9) test cases |  | 15d | 2007-08-08 A | 2007-08-28 A | 151 | 100% |  | 2006-06-19 | 2006-06-30 | 10d |  |  | start no earlier than 2007-02-27 | Eugene | 120h | 120h |
| 159 | 4.1.6.2.9 | **Fix Bugs** |  | 47d? | 2007-08-29 A | 2007-11-01 A | 158 | 100% |  |  |  |  |  |  |  | Nick; Eugene; Harsha | 2328h | 2328h |
| 160 | 4.1.6.2.9.1 | Phase I (Misc Bugs) |  | 30d? | 2007-08-29 A | 2007-10-09 A |  | 100% |  |  |  |  |  |  |  | Eugene; Nick; Harsha | 720h | 720h |
| 161 | 4.1.6.2.9.2 | Phase II (HL7 specific, UI, GForge, Memory) |  | 18d? | 2007-10-09 A | 2007-11-01 A |  | 100% |  |  |  |  |  |  | start no earlier than 2007-10-09 | Eugene; Nick; Harsha | 432h | 432h |
| 162 | 4.1.6.2.9.3 | Review and update Website |  | 6d? | 2007-10-25 A | 2007-11-01 A |  | 100% |  |  |  |  |  |  | start no earlier than 2007-10-25 | Charles | 48h | 48h |
| 163 | 4.1.6.2.10 | Regression testing for bug fixes |  | 3d | 2007-11-05 A | 2007-11-07 | 160, 161, 162 | 67% | 1d | 2006-10-23 | 2006-10-31 | 7d | 13d | 0d | finish no earlier than 2007-11-07 | Ki-Sung; Eugene; QA; Charles; Nick | 120h | 80h |
| 164 | 2.1.3.3 | Deliverable: QA Test Results | milestone | 1d | 2007-11-08 | 2007-11-08 | 163 |  |  | 2006-12-06 | 2006-12-06 | 1d | 13d |  | start no earlier than 2005-04-08 | Harsha; Ki-Sung; Wendy; Ye; Eugene; QA | 48h |  |

| ID | WBS | Task | Type | Duration | Start | Finish | Predecessors | Complete | Remaining | Baseline start | Baseline finish | Baseline duration | Total slack | Free slack | Constraint | Resources | Work | Actual work | Text1 |
| --- | --- | --- | --- | --- | --- | --- | --- | --- | --- | --- | --- | --- | --- | --- | --- | --- | --- | --- | --- |
| 165 | 4.1.7 | **Documentation** |  | 18d | 2007-09-03 A | 2007-09-26 |  | 82% | 3.26d | 2006-07-18 | 2006-12-22 | 113.7d | 132d |  |  |  | 418.4h | 331.2h |  |
| 166 | 2.1.5.4.1 | Update Requirements |  | 1d | 2007-09-17 A | 2007-09-17 | 169 | 90% | 0.1d | 2006-12-06 | 2006-12-12 | 5d | 51d |  |  | Harsha | 8h | 7.2h |  |
| 167 | 2.1.3.3 | Deliverable: Requirements | milestone | 1d | 2007-09-17 A | 2007-09-17 | 169 | 90% | 0.1d | 2006-12-13 | 2006-12-13 | 1d | 51d |  | start no earlier than 2005-04-08 | Harsha | 8h | 7.2h |  |
| 168 | 2.1.5.4.3 | Update Users Guide |  | 10d | 2007-09-03 A | 2007-09-14 |  | 90% | 1d | 2005-07-25 | 2005-08-05 | 10d? | 52d |  | finish no earlier than 2007-09-14 | Wendy; Ye | 160h | 144h |  |
| 169 | 2.1.3.3 | Deliverable: Users Guide | milestone | 1d | 2007-09-14 A | 2007-09-14 |  | 90% | 0.1d | 2006-12-15 | 2006-12-15 | 1d | 50.4d | 0d | start no earlier than 2007-09-14 | Wendy; Ye | 16h | 14.4h |  |
| 170 | 2.1.5.4.2 | Update Design Document |  | 1d | 2007-09-17 A | 2007-09-17 | 169 | 90% | 0.1d | 2006-12-06 | 2006-12-12 | 5d | 51d |  |  | Eugene | 8h | 7.2h |  |
| 171 | 2.1.3.3 | Deliverable: Design Document | milestone | 1d | 2007-09-17 A | 2007-09-17 | 169 | 90% | 0.1d | 2006-12-13 | 2006-12-13 | 1d | 51d |  | start no earlier than 2005-04-08 | Eugene | 8h | 7.2h |  |
| 172 | 2.1.5.4.4 | Update Installation Guide |  | 2d | 2007-09-17 A | 2007-09-18 | 169 | 90% | 0.2d | 2006-12-06 | 2006-12-14 | 7d | 50d |  |  | Nick | 16h | 14.4h |  |
| 173 | 2.1.3.3 | Deliverable: Installation Guide | milestone | 1d | 2007-09-17 A | 2007-09-17 | 169 | 90% | 0.1d | 2006-12-15 | 2006-12-15 | 1d | 50d | 0d | start no earlier than 2005-04-08 | Nick | 8h | 7.2h |  |
| 174 | 2.1.5.4.5 | Update Readme |  | 1d | 2007-09-18 | 2007-09-18 | 173 |  |  | 2006-12-06 | 2006-12-06 | 1d | 50d |  | start no earlier than 2005-12-19 | Harsha; Ki-Sung; Wendy; Ye; Eugene | 40h |  |  |
| 175 | 2.1.5.4.6 | Update Release Note |  | 1d | 2007-09-18 | 2007-09-18 | 173 |  |  | 2006-12-06 | 2006-12-07 | 2d | 50d |  | start no earlier than 2005-12-19 | Nick | 8h |  |  |
| 176 | 2.1.5.4.6 | Update Press Release |  | 1d | 2007-09-18 A | 2007-09-18 | 173 | 90% | 0.1d | 2006-12-06 | 2006-12-07 | 2d | 49.7d | 0d | start no earlier than 2005-12-19 | Harsha; Ki-Sung; Wendy; Ye; Eugene | 40h | 36h |  |
| 177 | 2.1.5.4.8 | Update the Website content |  | 3d | 2007-09-19 A | 2007-09-21 | 176 | 90% | 0.3d | 2006-12-06 | 2006-12-12 | 5d | 47d |  |  | Harsha; Ki-Sung; Ye; Eugene; Charles | 98.4h | 86.4h |  |
| 178 | 4.1.7.13 | First Draft Revision and Help system generation |  | 5d | 2007-09-17 A | 2007-09-21 | 169 | 80% | 1d |  |  |  | 46.4d | 0d |  |  |  |  |  |
| 179 | 4.1.7.14 | Dev Team Revision - 2nd Round |  | 2d | 2007-09-24 A | 2007-09-25 | 178 | 80% | 0.4d |  |  |  | 44.8d | 0d |  |  |  |  |  |
| 180 | 4.1.7.15 | Final Draft Ready |  | 1d | 2007-09-26 A | 2007-09-26 | 179 | 80% | 0.2d |  |  |  | 44d |  |  |  |  |  |  |
| 181 | 4.1.8 | Deploy to Staging |  | 1d | 2007-11-09 A | 2007-11-09 A | 165, 163 | 100% |  |  |  |  |  |  | start no earlier than 2007-11-09 | System; Eugene | 16h | 16h |  |
| 182 | 4.1.9 | Deploy to Production |  | 1d | 2007-11-14 A | 2007-11-14 A | 181 | 100% |  | 2006-12-19 | 2006-12-20 | 2d |  |  | finish no earlier than 2007-11-14 | Eugene; System | 16h | 16h |  |
| 183 | 2.1.3.3 | Deliverable: Production System | milestone | 1d | 2007-11-27 | 2007-11-27 | 181 |  |  | 2006-12-21 | 2006-12-22 | 2d | 36d |  | start no earlier than 2007-11-27 | Harsha; Ki-Sung; Wendy; Ye; Eugene | 40h |  | Delayed due to Systems issues on QA |
| 185 | 5 | **caAdapter - TDMS Module Tasks** |  | 309d? | 2007-01-16 | 2008-03-21 |  |  |  |  |  |  | 0d |  |  |  | 416h |  |  |
| 186 | 5.1 | **1st Iteration** |  | 36d? | 2007-11-28 | 2008-01-16 |  |  |  |  |  |  | 47d |  |  |  | 416h |  |  |
| 187 | 5.1.1 | Internal project kickoff |  | 1d? | 2007-11-28 | 2007-11-28 |  |  |  |  |  |  | 35d |  | start no earlier than 2007-11-28 | CY; EW; NS | 24h |  |  |
| 188 | 5.1.2 | Development Week 1 |  | 5d | 2007-11-28 | 2007-12-04 |  |  |  |  |  |  | 31d |  | start no earlier than 2007-11-28 | EW; NS | 80h |  |  |
| 189 | 5.1.3 | Deliverable - Internal: Ability to load a CSV and an XMI (DB) structures in the mapping tool | milestone | 0.5d? | 2007-12-05 | 2007-12-05 | 188 |  |  |  |  |  | 25d | 0d |  | EW; CY | 8h |  |  |
| 190 | 5.1.4 | Development Week 2 |  | 5d | 2007-12-05 | 2007-12-12 | 189 |  |  |  |  |  | 25d | 0d |  | EW/NS | 40h |  |  |
| 191 | 5.1.5 | Deliverable - Prototype Completed | milestone | 0.5d? | 2007-12-12 | 2007-12-12 | 190 |  |  |  |  |  | 25d |  |  | EW; CY | 8h |  |  |
| 192 | 5.1.6 | Review with caTREN Team |  | 1d? | 2007-12-14 | 2007-12-14 |  |  |  |  |  |  | 18d | 0d | start no earlier than 2007-12-14 | Team | 8h |  |  |
| 193 | 5.1.7 | Update prototype |  | 5d | 2007-12-17 | 2007-12-21 | 192 |  |  |  |  |  | 18d |  |  | NS; EW | 80h |  |  |
| 194 | 5.1.8 | Deliverable - 1st Iteration of module (v 4.0 - TDMS 0.1) delivered to QA | milestone | 0.5d? | 2008-01-03 | 2008-01-03 |  |  |  |  |  |  | 9.5d |  | start no earlier than 2008-01-03 | EW; CY | 8h |  |  |
| 195 | 5.1.9 | Support QA Test |  | 4d | 2008-01-03 | 2008-01-08 |  |  |  |  |  |  | 6d |  | start no earlier than 2008-01-03 | NS; EW | 64h |  |  |
| 196 | 5.1.10 | Support Staging and Production Deployments |  | 5d | 2008-01-10 | 2008-01-16 | 195 |  |  |  |  |  | 47d |  | start no earlier than 2008-01-10 | NS; EW | 80h |  |  |
| 197 | 5.1.11 | Deliverable - 1st Iteration of module (v4.0 - TDMS 0.1) is in production | milestone | 1d | 2008-01-16 | 2008-01-16 | 196FF |  |  |  |  |  | 47d |  | start no earlier than 2008-01-16 | EW; CY | 16h |  |  |

| ID | WBS | Task | Type | Duration | Start | Finish | Predecessors | Baseline start | Baseline finish | Baseline duration | Total slack | Free slack | Constraint |
| --- | --- | --- | --- | --- | --- | --- | --- | --- | --- | --- | --- | --- | --- |
| 198 | 5.2 | **2nd Iteration** |  | 309d? | 2007-01-16 | 2008-03-21 |  |  |  |  | 0d |  |  |
| 199 | 5.2.1 | **Inception** |  | 15d? | 2008-01-07 | 2008-01-25 |  |  |  |  | 40d |  |  |
| 200 | 5.2.1.1 | Develop Use Cases Document |  | 5d | 2008-01-07 | 2008-01-11 |  |  |  |  | 40d | 0d | start no earlier than 2008-01-07 |
| 201 | 5.2.1.2 | Develop Desing Document |  | 6d | 2008-01-14 | 2008-01-21 | 200 |  |  |  | 40d | 0d | start no earlier than 2008-01-14 |
| 202 | 5.2.1.3 | Design Review |  | 3d | 2008-01-22 | 2008-01-24 | 201 |  |  |  | 40d | 0d | start no earlier than 2008-01-22 |
| 203 | 5.2.1.4 | Deliverable - Use Case Document | milestone | 1d? | 2008-01-25 | 2008-01-25 | 202 |  |  |  | 40d |  | start no earlier than 2008-01-25 |
| 204 | 5.2.1.5 | Deliverable - Desing Document | milestone | 1d | 2008-01-25 | 2008-01-25 | 203FF |  |  |  | 40d |  | start no earlier than 2008-01-25 |
| 205 | 5.2.2 | **QA Test Plan and Test Cases** |  | 274d | 2007-01-16 | 2008-02-01 |  | 2006-07-04 | 2006-07-17 | 10d | 35d |  |  |
| 206 | 5.2.2.1 | Draft Test Plan /Test Cases |  | 5d | 2008-01-28 | 2008-02-01 |  | 2006-07-04 | 2006-07-17 | 10d | 35d | 0d | start no earlier than 2008-01-28 |
| 207 | 5.2.2.2 | Deliverable: Draft Test Plan | milestone | 1d | 2008-02-01 | 2008-02-01 | 206FF | 2006-07-18 | 2006-07-18 | 0.3d | 35d |  | start no earlier than 2008-01-25 |
| 208 | 5.2.2.3 | Enhance Test Plan and Test Cases |  | 10d | 2007-01-16 | 2007-01-29 |  | 2006-07-04 | 2006-07-17 | 10d | 251d | 0d |  |
| 209 | 5.2.2.4 | Deliverable - Final Test Plan | milestone | 1d | 2007-01-30 | 2007-01-30 | 208 | 2006-07-18 | 2006-07-18 | 0.3d | 251d |  |  |
| 210 | 5.2.3 | **Construction** |  | 25d | 2008-01-28 | 2008-02-29 |  |  |  |  | 15d |  |  |
| 211 | 5.2.3.1 | 1st Constuction Phase |  | 5d | 2008-01-28 | 2008-02-01 |  |  |  |  | 35d |  | start no earlier than 2008-01-28 |
| 212 | 5.2.3.2 | Deliverable - Internal Checkpoint 1 | milestone | 1d | 2008-02-01 | 2008-02-01 | 211FF |  |  |  | 15d | 0d | start no earlier than 2008-02-01 |
| 213 | 5.2.3.3 | 2nd Construction Phase |  | 10d | 2008-02-04 | 2008-02-15 | 212 |  |  |  | 25d |  | start no earlier than 2008-02-04 |
| 214 | 5.2.3.4 | Deliverable - Internal Checkpoint 2 | milestone | 1d | 2008-02-15 | 2008-02-15 | 213FF |  |  |  | 15d | 0d | start no earlier than 2008-02-15 |
| 215 | 5.2.3.5 | 3rd Construction Phase |  | 6d | 2008-02-18 | 2008-02-25 | 214 |  |  |  | 15d | 0d | start no earlier than 2008-02-18 |
| 216 | 5.2.3.6 | Internal Testing |  | 3d | 2008-02-26 | 2008-02-28 | 215 |  |  |  | 16d |  | start no earlier than 2008-02-26 |
| 217 | 5.2.3.7 | Deliverable - 2nd Iteration Comleted | milestone | 1d | 2008-02-29 | 2008-02-29 | 216 |  |  |  | 20d |  | start no earlier than 2008-02-29 |
| 218 | 2.1.5 | **Transition** |  | 15d | 2008-03-03 | 2008-03-21 |  | 2005-07-11 | 2005-08-09 | 22d? | 0d |  |  |
| 219 | 2.1.5.1 | **Deploy To QA Server- System testing** |  | 5d | 2008-03-03 | 2008-03-07 |  | 2005-07-11 | 2005-07-22 | 10d | 0d |  |  |
| 220 | 5.2.4.1.1 | Deploy to QA server for System testing |  | 2d | 2008-03-03 | 2008-03-04 |  | 2006-09-21 | 2006-09-22 | 2d | 0d |  | start no earlier than 2008-03-03 |
| 221 | 5.2.4.1.2 | Execute all test cases |  | 2d | 2008-03-05 | 2008-03-06 | 220 |  |  |  | 0d |  | start no earlier than 2008-03-05 |
| 222 | 5.2.4.1.3 | Deliverable: QA Test Results | milestone | 1d | 2008-03-07 | 2008-03-07 | 221 | 2006-10-23 | 2006-10-31 | 7d | 0d |  | start no earlier than 2008-03-07 |

| ID | WBS | Task | Type | Duration | Start | Finish | Predecessors | Baseline start | Baseline finish | Baseline duration | Total slack | Constraint |
| --- | --- | --- | --- | --- | --- | --- | --- | --- | --- | --- | --- | --- |
| 223 | 2.1.5.2 | **Deploy to Staging Server** |  | 5d | 2008-03-10 | 2008-03-14 |  | 2006-11-01 | 2006-11-21 | 15d | 0d |  |
| 224 | 5.2.4.2.1 | Deploy to Staging server |  | 2d | 2008-03-10 | 2008-03-11 | 222 | 2006-11-01 | 2006-11-02 | 2d | 0d | start no earlier than 2008-03-10 |
| 225 | 5.2.4.2.2 | Execute all test cases |  | 3d | 2008-03-12 | 2008-03-14 | 224 | 2006-10-23 | 2006-10-31 | 7d | 0d |  |
| 226 | 2.1.7 | **Support User Acceptance Test** |  | 5d | 2008-03-17 | 2008-03-21 |  | 2006-11-22 | 2006-12-05 | 10d | 0d |  |
| 227 | 5.2.4.3.1 | UAT Testing |  | 4d | 2008-03-17 | 2008-03-20 | 225 | 2006-11-22 | 2006-12-05 | 2w | 0d | start no earlier than 2008-03-17 |
| 228 | 2.1.3.3 | Deliverable: UAT Test Results | milestone | 1d | 2008-03-21 | 2008-03-21 | 227 | 2006-12-06 | 2006-12-06 | 1d | 0d | start no earlier than 2008-03-20 |
| 229 | 5.2.5 | **Documentation** |  | 10d? | 2008-03-10 | 2008-03-21 |  |  |  |  | 0d |  |
| 230 | 5.2.5.1 | Update the Use Case Document |  | 3d | 2008-03-10 | 2008-03-12 |  |  |  |  | 7d | start no earlier than 2008-03-10 |
| 231 | 5.2.5.2 | Update Design Document |  | 3d | 2008-03-13 | 2008-03-17 |  |  |  |  | 4d | start no earlier than 2008-03-13 |
| 232 | 5.2.5.3 | Develop the Users Guid Section for the TDMS Module |  | 3d | 2008-03-18 | 2008-03-20 |  |  |  |  | 1d | start no earlier than 2008-03-18 |
| 233 | 5.2.5.4 | Deliverable - Use Case, Design, and Users Guide Documents | milestone | 1d? | 2008-03-21 | 2008-03-21 |  |  |  |  | 0d | start no earlier than 2008-03-21 |
| 234 | 5.2.6 | Deliverable - 2nd Iteration TDMS Production Module | milestone | 1d? | 2008-03-21 | 2008-03-21 | 228FF |  |  |  | 0d | finish no earlier than 2008-03-21 |
